# Proyecto capstone

How a schedule from MS Project changed from version to version. A marks actual dates.

## Version 1 (saved 2025-09-09)

Note of the change: subida de documentos

| ID | WBS | Task | Duration | Start | Finish | Predecessors | Complete | Total float | Constraint |
| --- | --- | --- | --- | --- | --- | --- | --- | --- | --- |
| 1 | 0 | **Proyecto de Traducción a LSCh CATCH AI** | 60d | 2025-08-11 A | 2025-11-06 |  | 9% | 0d |  |
| 2 | 0 | **Sprint 0** | 6d | 2025-08-11 A | 2025-08-19 |  | 87% | 54d |  |
| 3 | 0.1 | **Elaboración de Documentación inicial del Proyecto** | 4d | 2025-08-11 A | 2025-08-14 |  | 81% | 0.75d |  |
| 4 |  | Kick-off meeting del proyecto | 1d | 2025-08-11 A | 2025-08-11 A |  | 100% |  | start no earlier than 2025-08-11 |
| 5 |  | Elaboración del ERS (Especificación de Requerimientos de Software) | 2d | 2025-08-12 A | 2025-08-13 | 4 | 75% | 0.75d |  |
| 6 |  | Definición de roles y responsabilidades (Matriz RACI) | 1d | 2025-08-14 A | 2025-08-14 | 5 | 75% | 0.75d |  |
| 7 |  | Planificación general y creación backlog inicial | 1d | 2025-08-15 A | 2025-08-18 | 6 | 75% | 55d | start no earlier than 2025-08-17 |
| 8 |  | Configuración entorno de desarrollo (repositorios, Trello, Project) | 3d | 2025-08-14 A | 2025-08-18 A | 5 | 100% |  | start no earlier than 2025-08-10 |
| 9 |  | Pruebas iniciales de cámaras y laboratorio FreeMoCap | 4d | 2025-08-14 A | 2025-08-19 A | 5 | 100% |  | start no earlier than 2025-08-10 |
| 10 |  | Pruebas de micrófonos y setup voz a texto | 1d | 2025-08-14 A | 2025-08-14 A | 5 | 100% |  | start no earlier than 2025-08-10 |
| 11 |  | Gestión de riesgos y mitigaciones | 1d | 2025-08-18 A | 2025-08-18 A | 7 | 100% |  | start no earlier than 2025-09-01 |
| 12 |  | Selección y priorización de historias de usuario | 1d | 2025-08-19 | 2025-08-19 | 11 |  | 0d |  |
| 13 | 1 | **Sprint 1** | 15d | 2025-08-20 | 2025-09-09 | 12 |  | 0d |  |
| 14 |  | Planificación Sprint 1 | 1d | 2025-08-20 | 2025-08-20 |  |  | 0d | start no earlier than 2025-08-20 |
| 15 |  | Reuniones de seguimiento semanales | 3d | 2025-08-20 | 2025-08-22 |  |  | 51d | start no earlier than 2025-08-20 |
| 16 | 1.3 | **Implementación módulo voz a texto (Whisper/AWS)** | 10d | 2025-08-21 | 2025-09-03 | 14 |  | 1d |  |
| 17 |  | Instalación y configuración de entorno de desarrollo (Python, librerías, Whisper/AWS Transcribe) | 1d | 2025-08-21 | 2025-08-21 |  |  | 1d |  |
| 18 |  | Pruebas iniciales de transcripción con audios de prueba | 2d | 2025-08-22 | 2025-08-25 | 17 |  | 1d |  |
| 19 |  | Optimización de parámetros de reconocimiento de voz (latencia, precisión) | 4d | 2025-08-26 | 2025-08-29 | 18 |  | 1d |  |
| 20 |  | Documentación del módulo de transcripción | 3d | 2025-09-01 | 2025-09-03 | 19 |  | 1d |  |
| 21 | 1.4 | **Creación avatar 3D (básico)** | 11d | 2025-08-21 | 2025-09-04 | 14 |  | 0d |  |
| 22 |  | Investigación y análisis de requisitos | 1d | 2025-08-21 | 2025-08-21 |  |  | 10d |  |
| 23 |  | Diseño conceptual del avatar | 2d | 2025-08-21 | 2025-08-22 |  |  | 0d |  |
| 24 |  | Modelado 3D | 3d | 2025-08-25 | 2025-08-27 | 23 |  | 0d |  |
| 25 |  | Texturizado y materiales | 2d | 2025-08-28 | 2025-08-29 | 24 |  | 0d |  |
| 26 |  | Rigging (esqueleto y controladores) | 1d | 2025-09-01 | 2025-09-01 | 25 |  | 0d |  |
| 27 |  | Animación básica | 2d | 2025-09-02 | 2025-09-03 | 26 |  | 0d |  |
| 28 |  | Pruebas de exportación | 1d | 2025-09-04 | 2025-09-04 | 27 |  | 0d |  |
| 29 |  | Integración en entorno de aplicación | 1d | 2025-09-04 | 2025-09-04 | 27 |  | 0d |  |
| 30 | 1.5 | **Captura de movimientos con FreeMoCap** | 10d | 2025-08-21 | 2025-09-03 | 14 |  | 1d |  |
| 31 |  | Seleccionar las señas a grabar | 2d | 2025-08-21 | 2025-08-22 |  |  | 1d |  |
| 32 |  | Grabación de señas individuales | 2d | 2025-08-25 | 2025-08-26 | 31 |  | 1d |  |
| 33 |  | Configuración y calibración de cámaras | 2d | 2025-08-27 | 2025-08-28 | 32 |  | 1d |  |
| 34 |  | Revisión y almacenamiento de archivos capturados | 2d | 2025-08-29 | 2025-09-01 | 33 |  | 1d |  |
| 35 |  | Organización de los datos en carpetas estructuradas | 2d | 2025-09-02 | 2025-09-03 | 34 |  | 1d |  |
| 36 |  | Informe de avance técnico Sprint 1 | 2d | 2025-09-05 | 2025-09-08 | 16, 21, 30 |  | 0d |  |
| 37 |  | Refinamiento y actualización de backlog | 1d | 2025-09-09 | 2025-09-09 | 36 |  | 0d |  |
| 38 | 2 | **Sprint 2** | 12d | 2025-09-10 | 2025-09-29 | 37 |  | 0d |  |
| 39 |  | Planificación Sprint 2 | 1d | 2025-09-10 | 2025-09-10 |  |  | 38d |  |
| 40 |  | Revisión y actualización del ERS | 1d | 2025-09-10 | 2025-09-10 | 37 |  | 0d |  |
| 41 | 2.3 | **Normalización de texto + pipeline NLP** | 10d | 2025-09-11 | 2025-09-26 | 40 |  | 0d |  |
| 42 |  | Diseñar pipeline de preprocesamiento de texto | 2d | 2025-09-11 | 2025-09-12 |  |  | 0d |  |
| 43 |  | Implementar limpieza y normalización (regex, stopwords, lowercase, etc.) | 4d | 2025-09-15 | 2025-09-22 | 42 |  | 0d |  |
| 44 |  | Pruebas con diferentes corpus y ajustes de reglas de normalización | 3d | 2025-09-23 | 2025-09-25 | 43 |  | 0d |  |
| 45 |  | Documentación y validación interna del pipeline | 1d | 2025-09-26 | 2025-09-26 | 44 |  | 0d |  |
| 46 | 2.4 | **Creación de estructura de esqueleto para el avatar** | 9d | 2025-09-11 | 2025-09-25 | 40 |  | 1d |  |
| 47 |  | Definición de la estructura ósea | 1d | 2025-09-11 | 2025-09-11 |  |  | 1d |  |
| 48 |  | Configuración de controladores | 2d | 2025-09-12 | 2025-09-15 | 47 |  | 1d |  |
| 49 |  | Creación de “weight painting” | 2d | 2025-09-16 | 2025-09-17 | 48 |  | 1d |  |
| 50 |  | Validación de movimientos críticos | 1d | 2025-09-22 | 2025-09-22 | 49 |  | 1d |  |
| 51 |  | Optimización del sistema interno | 2d | 2025-09-23 | 2025-09-24 | 50 |  | 1d |  |
| 52 |  | Documentación técnica | 1d | 2025-09-25 | 2025-09-25 | 51 |  | 1d |  |
| 53 | 2.5 | **Depuración y ajuste de animaciones en Blender** | 8d | 2025-09-11 | 2025-09-24 | 40 |  | 2d |  |
| 54 |  | Importar datos de FreeMoCap en Blender | 3d | 2025-09-11 | 2025-09-15 |  |  | 2d |  |
| 55 |  | Eliminar frames con ruido o movimientos erróneos | 3d | 2025-09-16 | 2025-09-22 | 54 |  | 2d |  |
| 56 |  | Normalizar la escala y orientación del avatar | 1d | 2025-09-23 | 2025-09-23 | 55 |  | 2d |  |
| 57 |  | Exportar animaciones en formato GLB/FBX | 1d | 2025-09-24 | 2025-09-24 | 56 |  | 2d |  |
| 58 |  | Informe de avance técnico Sprint 2 | 1d | 2025-09-29 | 2025-09-29 | 40, 41, 46, 53 |  | 0d |  |
| 59 | 3 | **Sprint 3** | 24d | 2025-09-30 | 2025-11-03 | 58 |  | 0d |  |
| 60 |  | Planificación Sprint 3 | 1d | 2025-09-30 | 2025-09-30 |  |  | 0d |  |
| 61 | 3.2 | **Entrenamiento modelo Transformer (señas)** | 10d | 2025-10-01 | 2025-10-14 | 60 |  | 13d |  |
| 62 |  | Definir arquitectura del modelo Transformer y dataset base | 2d | 2025-10-01 | 2025-10-02 |  |  | 13d |  |
| 63 |  | Preparar dataset de entrenamiento y validación | 2d | 2025-10-03 | 2025-10-06 | 62 |  | 13d |  |
| 64 |  | Entrenamiento inicial del modelo y ajuste de hiperparámetros | 3d | 2025-10-07 | 2025-10-09 | 63 |  | 13d |  |
| 65 |  | Evaluación con métricas (accuracy, recall, F1-score) | 1d | 2025-10-10 | 2025-10-10 | 64 |  | 13d |  |
| 66 |  | Optimización y regularización (dropout, augmentation, early stopping) | 2d | 2025-10-13 | 2025-10-14 | 65 |  | 13d |  |
| 67 | 3.3 | **Implementación de texturas realistas** | 5d | 2025-09-30 | 2025-10-06 |  |  | 19d |  |
| 68 |  | Selección de librerías de texturas | 0.5d | 2025-09-30 | 2025-09-30 |  |  | 19d |  |
| 69 |  | Creación de mapas UV | 1d | 2025-09-30 | 2025-10-01 | 68 |  | 19d |  |
| 70 |  | Implementación de materiales PBR | 1d | 2025-10-01 | 2025-10-02 | 69 |  | 19d |  |

| ID | WBS | Task | Duration | Start | Finish | Predecessors | Total float |
| --- | --- | --- | --- | --- | --- | --- | --- |
| 71 |  | Creación de mapas secundarios | 1d | 2025-10-02 | 2025-10-03 | 70 | 19d |
| 72 |  | Pruebas de iluminación sobre texturas | 1d | 2025-10-03 | 2025-10-06 | 71 | 19d |
| 73 |  | Ajuste y optimización de rendimiento | 0.5d | 2025-10-06 | 2025-10-06 | 72 | 19d |
| 74 | 3.4 | **Implementación e integración del avatar en Godot** | 10d | 2025-10-01 | 2025-10-14 | 60 | 0d |
| 75 |  | Crear un proyecto base en Godot | 2d | 2025-10-01 | 2025-10-02 |  | 0d |
| 76 |  | Importar el avatar 3D y las animaciones | 2d | 2025-10-03 | 2025-10-06 | 75 | 0d |
| 77 |  | Configurar Skeleton3D y AnimationPlayer | 2d | 2025-10-07 | 2025-10-08 | 76 | 0d |
| 78 |  | Probar reproducción de animaciones manualmente | 2d | 2025-10-09 | 2025-10-10 | 77 | 0d |
| 79 |  | Ajustar compatibilidad de materiales y texturas | 2d | 2025-10-13 | 2025-10-14 | 78 | 0d |
| 80 | 3.5 | **Integración de modelo con biblioteca de señas** | 6d | 2025-10-01 | 2025-10-08 | 60 | 13d |
| 81 |  | Diseñar API de conexión entre modelo y motor gráfico (Godot/Unity) | 1d | 2025-10-01 | 2025-10-01 |  | 13d |
| 82 |  | Programar la vinculación texto → seña → animación | 2d | 2025-10-02 | 2025-10-03 | 81 | 13d |
| 83 |  | Pruebas de compatibilidad de formatos (GLB/FBX, Unity/Godot) | 2d | 2025-10-06 | 2025-10-07 | 82 | 13d |
| 84 |  | Ajustes de rendimiento y documentación técnica | 1d | 2025-10-08 | 2025-10-08 | 83 | 13d |
| 85 | 3.6 | **Fusión avatar y animaciones** | 13d | 2025-10-15 | 2025-11-03 | 74 | 0d |
| 86 |  | Preparación de archivos de captura de movimiento | 1d | 2025-10-15 | 2025-10-15 |  | 0d |
| 87 |  | Retargeting de animaciones | 3d | 2025-10-16 | 2025-10-20 | 86 | 0d |
| 88 |  | Ajuste de sincronización | 2d | 2025-10-21 | 2025-10-22 | 87 | 0d |
| 89 |  | Corrección de deformaciones | 2d | 2025-10-23 | 2025-10-24 | 88 | 0d |
| 90 |  | Integración en motor Godot | 3d | 2025-10-27 | 2025-10-29 | 89 | 0d |
| 91 |  | Pruebas de rendimiento en tiempo real | 1d | 2025-10-30 | 2025-10-30 | 90 | 0d |
| 92 |  | Generación de alternativas de integración | 1d | 2025-11-03 | 2025-11-03 | 91 | 0d |
| 93 | 3.7 | **Desarrollo de menús y lógica en Godot** | 10d | 2025-10-01 | 2025-10-14 | 60 | 9d |
| 94 |  | Diseñar interfaz inicial (UI) | 2d | 2025-10-01 | 2025-10-02 |  | 9d |
| 95 |  | Implementar botones para seleccionar animaciones | 2d | 2025-10-03 | 2025-10-06 | 94 | 9d |
| 96 |  | Programar lógica de reproducción desde UI | 2d | 2025-10-07 | 2025-10-08 | 95 | 9d |
| 97 |  | Validar que las animaciones se ejecuten sin errores | 2d | 2025-10-09 | 2025-10-10 | 96 | 9d |
| 98 |  | Realizar pruebas de usabilidad interna con el equipo | 2d | 2025-10-13 | 2025-10-14 | 97 | 9d |
| 99 | 3.8 | **Pruebas funcionales y conexión speech-to-text con Godot** | 3d | 2025-10-15 | 2025-10-17 | 80, 93, 74 | 9d |
| 100 |  | Programar comunicación HTTP request entre Godot y el modelo | 0.5d | 2025-10-15 | 2025-10-15 |  | 9d |
| 101 |  | Asociar palabras reconocidas a animaciones específicas | 0.5d | 2025-10-15 | 2025-10-15 | 100 | 9d |
| 102 |  | Prueba del flujo completo (voz → texto → normalización → modelo → seña) | 0.5d | 2025-10-16 | 2025-10-16 | 101 | 9d |
| 103 |  | Corrección de errores y mejoras en sincronización | 0.5d | 2025-10-16 | 2025-10-16 | 102 | 9d |
| 104 |  | Elaboración de informe de validación y resultados | 1d | 2025-10-17 | 2025-10-17 | 103 | 9d |
| 105 |  | Informe de avance técnico Sprint 3 | 1d | 2025-10-20 | 2025-10-20 | 99 | 9d |
| 106 | 4 | **Pruebas y Entrega** | 3d | 2025-11-04 | 2025-11-06 | 59 | 0d |
| 107 |  | Validación final del MVP con stakeholders | 1d | 2025-11-04 | 2025-11-04 |  | 0d |
| 108 |  | Revisión final de entregables | 1d | 2025-11-05 | 2025-11-05 | 107 | 0d |
| 109 |  | Presentación final del MVP | 1d | 2025-11-06 | 2025-11-06 | 108 | 0d |

## Version 2 (saved 2025-09-17)

Note of the change: plan de riesgos

Last finish stays 2025-11-06.

Changed:

| ID | Task | Other |
| --- | --- | --- |
| 7 | Planificación general y creación backlog inicial | constraint start no earlier than 2025-08-17 → start no earlier than 2025-08-10 |

## Version 3 (saved 2025-10-20)

Note of the change: actualización de documentos

Last finish stays 2025-11-06. Complete tasks 5 → 69.

Changed:

| ID | Task | Start | Finish | Complete | Total float | Other |
| --- | --- | --- | --- | --- | --- | --- |
| 1 | **Proyecto de Traducción a LSCh CATCH AI** |  |  | 9% → 82% |  |  |
| 2 | **Sprint 0** |  | 2025-08-19 A | 87% → 100% | 54d → none |  |
| 3 | **Elaboración de Documentación inicial del Proyecto** |  | 2025-08-14 A | 81% → 100% | 0.75d → none |  |
| 5 | Elaboración del ERS (Especificación de Requerimientos de Software) |  | 2025-08-13 A | 75% → 100% | 0.75d → none |  |
| 6 | Definición de roles y responsabilidades (Matriz RACI) |  | 2025-08-14 A | 75% → 100% | 0.75d → none |  |
| 7 | Planificación general y creación backlog inicial |  | 2025-08-18 A | 75% → 100% | 55d → none | constraint start no earlier than 2025-08-10 → start no earlier than 2025-08-17 |
| 12 | Selección y priorización de historias de usuario | 2025-08-19 A | 2025-08-19 A | 0% → 100% | 0d → none |  |
| 13 | **Sprint 1** | 2025-08-20 A | 2025-09-09 A | 0% → 100% | 0d → none |  |
| 14 | Planificación Sprint 1 | 2025-08-20 A | 2025-08-20 A | 0% → 100% | 0d → none |  |
| 15 | Reuniones de seguimiento semanales | 2025-08-20 A | 2025-08-22 A | 0% → 100% | 51d → none |  |
| 16 | **Implementación módulo voz a texto (Whisper/AWS)** | 2025-08-21 A | 2025-09-03 A | 0% → 100% | 1d → none |  |
| 17 | Instalación y configuración de entorno de desarrollo (Python, librerías, Whisper/AWS Transcribe) | 2025-08-21 A | 2025-08-21 A | 0% → 100% | 1d → none |  |
| 18 | Pruebas iniciales de transcripción con audios de prueba | 2025-08-22 A | 2025-08-25 A | 0% → 100% | 1d → none |  |
| 19 | Optimización de parámetros de reconocimiento de voz (latencia, precisión) | 2025-08-26 A | 2025-08-29 A | 0% → 100% | 1d → none |  |
| 20 | Documentación del módulo de transcripción | 2025-09-01 A | 2025-09-03 A | 0% → 100% | 1d → none |  |
| 21 | **Creación avatar 3D (básico)** | 2025-08-21 A | 2025-09-04 A | 0% → 100% | 0d → none |  |
| 22 | Investigación y análisis de requisitos | 2025-08-21 A | 2025-08-21 A | 0% → 100% | 10d → none |  |
| 23 | Diseño conceptual del avatar | 2025-08-21 A | 2025-08-22 A | 0% → 100% | 0d → none |  |
| 24 | Modelado 3D | 2025-08-25 A | 2025-08-27 A | 0% → 100% | 0d → none |  |
| 25 | Texturizado y materiales | 2025-08-28 A | 2025-08-29 A | 0% → 100% | 0d → none |  |
| 26 | Rigging (esqueleto y controladores) | 2025-09-01 A | 2025-09-01 A | 0% → 100% | 0d → none |  |
| 27 | Animación básica | 2025-09-02 A | 2025-09-03 A | 0% → 100% | 0d → none |  |
| 28 | Pruebas de exportación | 2025-09-04 A | 2025-09-04 A | 0% → 100% | 0d → none |  |
| 29 | Integración en entorno de aplicación | 2025-09-04 A | 2025-09-04 A | 0% → 100% | 0d → none |  |
| 30 | **Captura de movimientos con FreeMoCap** | 2025-08-21 A | 2025-09-03 A | 0% → 100% | 1d → none |  |
| 31 | Seleccionar las señas a grabar | 2025-08-21 A | 2025-08-22 A | 0% → 100% | 1d → none |  |
| 32 | Grabación de señas individuales | 2025-08-25 A | 2025-08-26 A | 0% → 100% | 1d → none |  |
| 33 | Configuración y calibración de cámaras | 2025-08-27 A | 2025-08-28 A | 0% → 100% | 1d → none |  |
| 34 | Revisión y almacenamiento de archivos capturados | 2025-08-29 A | 2025-09-01 A | 0% → 100% | 1d → none |  |
| 35 | Organización de los datos en carpetas estructuradas | 2025-09-02 A | 2025-09-03 A | 0% → 100% | 1d → none |  |
| 36 | Informe de avance técnico Sprint 1 | 2025-09-05 A | 2025-09-08 A | 0% → 100% | 0d → none |  |
| 37 | Refinamiento y actualización de backlog | 2025-09-09 A | 2025-09-09 A | 0% → 100% | 0d → none |  |
| 38 | **Sprint 2** | 2025-09-10 A | 2025-09-29 A | 0% → 100% | 0d → none |  |
| 39 | Planificación Sprint 2 | 2025-09-10 A | 2025-09-10 A | 0% → 100% | 38d → none |  |
| 40 | Revisión y actualización del ERS | 2025-09-10 A | 2025-09-10 A | 0% → 100% | 0d → none |  |
| 41 | **Normalización de texto + pipeline NLP** | 2025-09-11 A | 2025-09-26 A | 0% → 100% | 0d → none |  |
| 42 | Diseñar pipeline de preprocesamiento de texto | 2025-09-11 A | 2025-09-12 A | 0% → 100% | 0d → none |  |
| 43 | Implementar limpieza y normalización (regex, stopwords, lowercase, etc.) | 2025-09-15 A | 2025-09-22 A | 0% → 100% | 0d → none |  |
| 44 | Pruebas con diferentes corpus y ajustes de reglas de normalización | 2025-09-23 A | 2025-09-25 A | 0% → 100% | 0d → none |  |
| 45 | Documentación y validación interna del pipeline | 2025-09-26 A | 2025-09-26 A | 0% → 100% | 0d → none |  |
| 46 | **Creación de estructura de esqueleto para el avatar** | 2025-09-11 A | 2025-09-25 A | 0% → 100% | 1d → none |  |
| 47 | Definición de la estructura ósea | 2025-09-11 A | 2025-09-11 A | 0% → 100% | 1d → none |  |
| 48 | Configuración de controladores | 2025-09-12 A | 2025-09-15 A | 0% → 100% | 1d → none |  |
| 49 | Creación de “weight painting” | 2025-09-16 A | 2025-09-17 A | 0% → 100% | 1d → none |  |
| 50 | Validación de movimientos críticos | 2025-09-22 A | 2025-09-22 A | 0% → 100% | 1d → none |  |
| 51 | Optimización del sistema interno | 2025-09-23 A | 2025-09-24 A | 0% → 100% | 1d → none |  |
| 52 | Documentación técnica | 2025-09-25 A | 2025-09-25 A | 0% → 100% | 1d → none |  |
| 53 | **Depuración y ajuste de animaciones en Blender** | 2025-09-11 A | 2025-09-24 A | 0% → 100% | 2d → none |  |
| 54 | Importar datos de FreeMoCap en Blender | 2025-09-11 A | 2025-09-15 A | 0% → 100% | 2d → none |  |
| 55 | Eliminar frames con ruido o movimientos erróneos | 2025-09-16 A | 2025-09-22 A | 0% → 100% | 2d → none |  |
| 56 | Normalizar la escala y orientación del avatar | 2025-09-23 A | 2025-09-23 A | 0% → 100% | 2d → none |  |
| 57 | Exportar animaciones en formato GLB/FBX | 2025-09-24 A | 2025-09-24 A | 0% → 100% | 2d → none |  |
| 58 | Informe de avance técnico Sprint 2 | 2025-09-29 A | 2025-09-29 A | 0% → 100% | 0d → none |  |
| 59 | **Sprint 3** | 2025-09-30 A |  | 0% → 61% |  |  |
| 60 | Planificación Sprint 3 | 2025-09-30 A | 2025-09-30 A | 0% → 100% | 0d → none |  |
| 61 | **Entrenamiento modelo Transformer (señas)** | 2025-10-01 A |  | 0% → 70% |  |  |
| 62 | Definir arquitectura del modelo Transformer y dataset base | 2025-10-01 A | 2025-10-02 A | 0% → 100% | 13d → none |  |
| 63 | Preparar dataset de entrenamiento y validación | 2025-10-03 A | 2025-10-06 A | 0% → 100% | 13d → none |  |
| 64 | Entrenamiento inicial del modelo y ajuste de hiperparámetros | 2025-10-07 A | 2025-10-09 A | 0% → 100% | 13d → none |  |
| 67 | **Implementación de texturas realistas** | 2025-09-30 A |  | 0% → 30% |  |  |
| 68 | Selección de librerías de texturas | 2025-09-30 A | 2025-09-30 A | 0% → 100% | 19d → none |  |
| 69 | Creación de mapas UV | 2025-09-30 A | 2025-10-01 A | 0% → 100% | 19d → none |  |
| 74 | **Implementación e integración del avatar en Godot** | 2025-10-01 A |  | 0% → 40% |  |  |
| 75 | Crear un proyecto base en Godot | 2025-10-01 A | 2025-10-02 A | 0% → 100% | 0d → none |  |
| 76 | Importar el avatar 3D y las animaciones | 2025-10-03 A | 2025-10-06 A | 0% → 100% | 0d → none |  |
| 80 | **Integración de modelo con biblioteca de señas** | 2025-10-01 A |  | 0% → 83% | 13d → 4d |  |
| 81 | Diseñar API de conexión entre modelo y motor gráfico (Godot/Unity) | 2025-10-01 A | 2025-10-01 A | 0% → 100% | 13d → none |  |
| 82 | Programar la vinculación texto → seña → animación | 2025-10-02 A | 2025-10-03 A | 0% → 100% | 13d → none |  |
| 83 | Pruebas de compatibilidad de formatos (GLB/FBX, Unity/Godot) | 2025-10-06 A | 2025-10-07 A | 0% → 100% | 13d → none |  |
| 85 | **Fusión avatar y animaciones** | 2025-10-15 A |  | 0% → 46% |  |  |

| ID | Task | Start | Finish | Complete | Total float |
| --- | --- | --- | --- | --- | --- |
| 86 | Preparación de archivos de captura de movimiento | 2025-10-15 A | 2025-10-15 A | 0% → 100% | 0d → none |
| 87 | Retargeting de animaciones | 2025-10-16 A | 2025-10-20 A | 0% → 100% | 0d → none |
| 88 | Ajuste de sincronización | 2025-10-21 A | 2025-10-22 A | 0% → 100% | 0d → none |
| 93 | **Desarrollo de menús y lógica en Godot** | 2025-10-01 A | 2025-10-14 A | 0% → 100% | 9d → none |
| 94 | Diseñar interfaz inicial (UI) | 2025-10-01 A | 2025-10-02 A | 0% → 100% | 9d → none |
| 95 | Implementar botones para seleccionar animaciones | 2025-10-03 A | 2025-10-06 A | 0% → 100% | 9d → none |
| 96 | Programar lógica de reproducción desde UI | 2025-10-07 A | 2025-10-08 A | 0% → 100% | 9d → none |
| 97 | Validar que las animaciones se ejecuten sin errores | 2025-10-09 A | 2025-10-10 A | 0% → 100% | 9d → none |
| 98 | Realizar pruebas de usabilidad interna con el equipo | 2025-10-13 A | 2025-10-14 A | 0% → 100% | 9d → none |
| 99 | **Pruebas funcionales y conexión speech-to-text con Godot** | 2025-10-15 A |  | 0% → 50% |  |
| 100 | Programar comunicación HTTP request entre Godot y el modelo | 2025-10-15 A | 2025-10-15 A | 0% → 100% | 9d → none |
| 101 | Asociar palabras reconocidas a animaciones específicas | 2025-10-15 A | 2025-10-15 A | 0% → 100% | 9d → none |
| 102 | Prueba del flujo completo (voz → texto → normalización → modelo → seña) | 2025-10-16 A | 2025-10-16 A | 0% → 100% | 9d → none |
